# Projeto_gap_2

Schedule from MS Project, 2026-01-05 to 2026-03-11, costs in €.

## Calendars

- Padrão: Mon-Fri 08:00-12:00, 13:00-17:00; Sat-Sun off.

## Resources

| Resource | Rate |
| --- | --- |
| Alex | 86 |
| Ana | 160 |
| Diogo | 102 |
| Leonor | 87 |
| Felix | 89 |
| Rui |  |
| José | 135 |
| João | 125 |
| Miguel | 97 |
| Carlos | 70 |
| Marco | 89 |
| Paulo | 175 |
| Pedro | 128 |
| Maria |  |
| Tiago | 58 |
| Lucas |  |
| Dummy Lucas | 97 |
| Dummy Rui | 89 |
| Dummy Maria | 151 |

## Schedule

| ID | WBS | Task | Type | Duration | Start | Finish | Predecessors | Total slack | Free slack | Resources | Work | Cost |
| --- | --- | --- | --- | --- | --- | --- | --- | --- | --- | --- | --- | --- |
| 1 | 1 | **projeto** |  | 48d | 2026-01-05 | 2026-03-11 |  | 0d |  |  | 3938.8h | 359,431.94 |
| 2 | 1.1 | Detailed specifications |  | 5.56d | 2026-01-05 | 2026-01-12 |  | 0.59d | 0d | Rui [90%]; Maria [80%]; Lucas | 120h |  |
| 3 | 1.2 | Stress analysis |  | 7d | 2026-01-19 | 2026-01-27 | 2 | 3.5d | 0d | João | 56h | 7,000 |
| 4 | 1.3 | Composite definition |  | 11.38d | 2026-01-12 | 2026-01-27 | 2 | 1.59d | 0d | Ana; Lucas; Carlos [70%] | 160h | 9,886.33 |
| 5 | 1.4 | Concept development |  | 9.82d | 2026-01-12 | 2026-01-26 | 2 | 3.15d | 0d | José [80%]; Pedro [80%]; Rui [90%] | 192h | 16,159.14 |
| 6 | 1.5 | Case modelling |  | 8d | 2026-01-27 | 2026-02-06 | 4, 5 | 1.59d | 0d | Ana; Lucas | 128h | 10,240 |
| 7 | 1.6 | Prototype execution |  | 8.97d | 2026-02-06 | 2026-02-19 | 3, 6 | 1.59d | 0d | João; Diogo; Rui [90%] | 208h | 16,281.38 |
| 8 | 1.7 | Production planning |  | 15.01d | 2026-02-06 | 2026-02-27 | 6 | 2.04d | 1.9d | Ana; Paulo; Felix; José [80%]; Maria [80%] | 480h | 57,540.62 |
| 9 | 1.8 | Mould making |  | 16.58d | 2026-02-06 | 2026-03-03 | 6 | 3.98d | 2.98d | Alex; Leonor [80%]; Miguel | 336h | 30,229.03 |
| 10 | 1.9 | Preparation of tests |  | 5.17d | 2026-01-26 | 2026-02-04 | 5 | 13.32d | 11.73d | Alex; João; Rui [90%] | 120h | 8,731.03 |
| 11 | 1.10 | Execution & analysis of tests |  | 10d | 2026-02-19 | 2026-03-05 | 7, 10 | 1.59d | 0.6d | João | 80h | 10,000 |
| 12 | 1.11 | Call for tenders to suppliers |  | 18.85d | 2026-01-12 | 2026-02-06 | 2 | 0.18d | 0d | Marco; Maria [80%]; Paulo | 175h | 16,715.39 |
| 13 | 1.12 | Production costs calculation |  | 6.67d | 2026-02-06 | 2026-02-17 | 6 | 11.39d | 10.4d | Marco; Carlos [70%]; Tiago | 144h | 10,453.33 |
| 14 | 1.13 | Supplier selection |  | 9.73d | 2026-02-06 | 2026-03-03 | 12 | 0.18d | 0d | Marco; Carlos [70%]; Pedro [80%]; Diogo; Rui [90%]; Tiago | 352h | 26,052.56 |
| 15 | 1.14 | Cost-benefit calculations |  | 2.5d | 2026-03-03 | 2026-03-06 | 8, 13, 14 | 0.45d | 0d | Lucas; Miguel | 40h | 1,940 |
| 16 | 1.15 | Integration Plan |  | 1.61d | 2026-03-06 | 2026-03-09 | 9, 11, 15 | 0.45d | 0d | Lucas; Marco; Ana; Maria [80%]; Leonor [80%]; Miguel | 72h | 5,343.41 |
| 17 | 1.16 | Documentation |  | 13.81d | 2026-01-28 | 2026-03-06 | 3 | 3.5d | 2.5d | José [80%]; Maria [80%]; Rui [90%]; Felix; Pedro [80%] | 175h | 15,097.97 |
| 18 | 1.17 | First series |  | 1.7d | 2026-03-09 | 2026-03-11 | 16, 17 | 0.45d |  | Lucas; Maria [80%]; Tiago; Alex; Carlos [70%]; Leonor [80%] | 64h | 3,368.14 |
| 19 | 1.18 | Retainer Dummy | manual | 48d | 2026-01-05 | 2026-03-11 |  |  |  | Dummy Lucas; Dummy Maria [80%]; Dummy Rui [90%] | 1036.8h | 114,393.6 |
